# TopCoder Software Project Plan

Schedule from MS Project, 2005-06-29 to 2006-09-08, A marks actual dates.
TopCoder Software Project Plan
TopCoder

## Calendars

- Standard: Mon-Fri 08:00-12:00, 13:00-17:00; Sat-Sun off.

## Resources

| Resource |
| --- |
| Project Manager |
| Component Architect |
| Information Architect |
| Component Manager |
| Application Architect |
| Application Assembler 1 |
| Deployment Engineer 1 |
| Customer |
| Member |
| Review |
| Application Assembler 4 |
| Application Assembler 3 |
| Application Assembler 2 |
| Deployment Engineer 3 |
| Deployment Engineer 2 |
| Deployment Engineer |
| Deployment Engineer/Project Manager |
| Javier |
| Greg Paul |
| Dave Messinger |
| Lorie Norman |
| Tony Jefts |
| test case participants |
| All Teams |
| All Captains |
| Reviewer3 |
| Reviewer2 |
| Reviewer1 |
| Assembly Manager |
| Architect |
| DE |
| Review Team |
| Kim Ruhl |
| Petar Canic |
| WishingBone |

## Schedule

| ID | WBS | Task | Type | Duration | Start | Finish | Predecessors | Complete | Remaining | Baseline start | Baseline finish | Baseline duration | Total slack | Constraint | Resources | Work | Actual work |
| --- | --- | --- | --- | --- | --- | --- | --- | --- | --- | --- | --- | --- | --- | --- | --- | --- | --- |
| 1 | 1 | **TopCoder Online Review/Scorecard Project** |  | 312.5d? | 2005-06-29 A | 2006-09-08 |  | 19% | 252.2d? |  |  |  | 0d |  |  | 1896h | 344h |
| 2 | 1.1 | Kick Off Meeting |  | 0.33d? | 2006-03-02 | 2006-03-02 |  |  |  |  |  |  | 13.67d | start no earlier than 2006-03-02 | Dave Messinger; Lorie Norman; Tony Jefts | 8h |  |
| 3 | 1.2 | Creation of TopCoder Application Forum |  | 1d | 2006-03-02 A | 2006-03-03 A | 2 | 100% |  |  |  |  |  | start no earlier than 2005-06-29 | Lorie Norman | 8h | 8h |
| 4 | 1.3 | Assign Client Permissions to Forums |  | 1d | 2006-03-02 A | 2006-03-02 A |  | 100% |  |  |  |  |  | start no earlier than 2005-06-29 | Lorie Norman | 8h | 8h |
| 5 | 1.4 | Create SVN module for Application |  | 1d | 2005-06-29 A | 2005-06-29 A |  | 100% |  |  |  |  |  | start no earlier than 2005-06-29 | Lorie Norman | 8h | 8h |
| 6 | 1.5 | Key Stakeholder Meetings |  | 1.5d | 2006-03-06 A | 2006-03-07 A |  | 100% |  |  |  |  |  | start no earlier than 2006-03-06 | Greg Paul; Javier; Dave Messinger; Lorie Norman | 48h | 48h |
| 7 | 1.6 | **Application Specification** |  | 33.5d? | 2006-03-02 A | 2006-04-18 |  | 98% | 0.74d? | 2004-01-20 | 2004-02-11 | 17d? | 0d |  |  | 280h | 272h |
| 8 | 1.6.1 | **Requirement Specification Draft** |  | 1d | 2006-03-03 A | 2006-03-03 A |  | 100% |  | 2004-01-20 | 2004-01-22 | 3d? |  |  | Lorie Norman | 8h | 8h |
| 9 | 1.6.1.1 | Fill in Scope |  | 1d | 2006-03-03 A | 2006-03-03 A |  | 100% |  |  |  |  |  | start no earlier than 2006-03-03 |  |  |  |
| 10 | 1.6.2 | Review Meeting |  | 0.5d | 2006-03-06 A | 2006-03-06 A | 8 | 100% |  | 2004-01-23 | 2004-01-23 | 1d? |  |  | Project Manager; Customer | 8h | 8h |
| 11 | 1.6.3 | Create/Update Use Cases |  | 2d | 2006-03-02 A | 2006-03-03 A |  | 100% |  |  |  |  |  | start no earlier than 2006-03-02 |  |  |  |
| 12 | 1.6.4 | **Module Specification** |  | 18.5d | 2006-03-09 A | 2006-04-04 A |  | 100% |  | 2004-01-23 | 2004-02-11 | 14d? |  |  |  | 80h | 80h |
| 13 | 1.6.4.1 | Create/Update Activity Diagram |  | 10d | 2006-03-15 A | 2006-03-28 A | 10 | 100% |  |  |  |  |  | finish no earlier than 2006-03-28 | Project Manager | 80h | 80h |
| 14 | 1.6.4.2 | Fill in Logic Requirements for use cases and activity diagrams |  | 5d | 2006-03-09 A | 2006-04-03 A | 13 | 100% |  |  |  |  |  |  |  |  |  |
| 15 | 1.6.4.3 | Review Meeting |  | 1d | 2006-04-04 A | 2006-04-04 A | 14 | 100% |  |  |  |  |  | start no earlier than 2006-03-10 |  |  |  |
| 16 | 1.6.5 | Create Site Map |  | 1d? | 2006-04-04 A | 2006-04-04 A |  | 100% |  |  |  |  |  | start no earlier than 2006-04-04 |  |  |  |
| 17 | 1.6.6 | Review Meeting |  | 0.5d | 2006-04-03 A | 2006-04-03 A |  | 100% |  |  |  |  |  | start no earlier than 2006-04-03 |  |  |  |
| 18 | 1.6.7 | Prototype Revision 1 |  | 14d | 2006-03-20 A | 2006-04-06 A |  | 100% |  |  |  |  |  | finish no earlier than 2006-04-06 | Kim Ruhl | 112h | 112h |
| 19 | 1.6.8 | Architecture Diagram Draft |  | 1d | 2006-03-22 A | 2006-03-23 A | 17 | 100% |  | 2004-01-27 | 2004-01-28 | 2d? |  | start no earlier than 2005-01-19 | Project Manager | 8h | 8h |
| 20 | 1.6.9 | Fill in Technical Requirements |  | 0.5d | 2006-04-04 A | 2006-04-04 A | 19 | 100% |  |  |  |  |  | start no earlier than 2006-04-04 |  |  |  |
| 21 | 1.6.10 | Review Meeting |  | 2d | 2006-04-07 A | 2006-04-10 A | 18 | 100% |  | 2004-01-30 | 2004-01-30 | 1d? |  | start no earlier than 2006-04-07 | Project Manager; Customer | 32h | 32h |
| 22 | 1.6.11 | Prototype Revision 2 Review |  | 2d | 2006-04-11 A | 2006-04-12 A | 21 | 100% |  |  |  |  |  | start no earlier than 2006-04-11 |  |  |  |
| 23 | 1.6.12 | Complete QA Plan |  | 1d | 2006-04-05 A | 2006-04-05 A | 12 | 100% |  |  |  |  |  |  |  |  |  |
| 24 | 1.6.13 | Review Meeting |  | 0.5d | 2006-04-13 A | 2006-04-13 A | 22 | 100% |  | 2004-02-06 | 2004-02-06 | 1d? |  |  | Project Manager; Customer | 8h | 8h |
| 25 | 1.6.14 | Update Final Specification Deliverables |  | 2d | 2006-04-13 A | 2006-04-17 A | 24 | 100% |  | 2004-02-09 | 2004-02-10 | 2d? |  | start no earlier than 2006-04-06 | Project Manager | 16h | 16h |
| 26 | 1.6.15 | Final Specification Presentation | milestone | 1d? | 2006-04-17 | 2006-04-18 | 25 |  |  | 2004-02-11 | 2004-02-11 | 1d? | 0d |  | Project Manager | 8h |  |

Notes:
- 12: This will be iterated over multiple times for each module.

| ID | WBS | Task | Type | Duration | Start | Finish | Predecessors | Total slack | Free slack | Constraint | Resources | Work |
| --- | --- | --- | --- | --- | --- | --- | --- | --- | --- | --- | --- | --- |
| 27 | 1.7 | **Application Architecture** |  | 28d | 2006-04-18 | 2006-05-26 |  | 0d |  |  |  | 368h |
| 28 | 1.7.1 | Test Scenarios |  | 10d | 2006-04-21 | 2006-05-04 | 23 | 15.5d |  | finish no earlier than 2006-05-04 |  |  |
| 29 | 1.7.2 | **UML Diagrams** |  | 16d | 2006-04-18 | 2006-05-10 | 7 | 0d |  |  |  | 208h |
| 30 | 1.7.2.1 | Update Site Map |  | 5d | 2006-04-18 | 2006-04-25 | 7 | 11d |  |  | Kim Ruhl; Petar Canic | 80h |
| 31 | 1.6.2 | Component Sequence Diagrams |  | 7d | 2006-04-18 | 2006-04-27 | 7 | 0d |  | finish no earlier than 2005-02-04 | WishingBone | 56h |
| 32 | 1.6.1 | Component Interface Diagram |  | 7d | 2006-04-27 | 2006-05-08 | 31 | 0d |  | finish no earlier than 2005-02-04 | WishingBone | 56h |
| 33 | 1.7.2.4 | Component Diagram |  | 2d | 2006-05-08 | 2006-05-10 | 32 | 0d |  |  | WishingBone | 16h |
| 34 | 1.6.3 | Physical Data Model Definition |  | 5d | 2006-05-10 | 2006-05-17 | 29 | 0d |  | finish no earlier than 2005-02-04 | WishingBone | 40h |
| 35 | 1.7.4 | PM Review |  | 1d | 2006-05-10 | 2006-05-11 | 29 | 10.5d | 0d |  | Project Manager; Component Architect | 16h |
| 36 | 1.6.4 | Application Architecture Presentation |  | 0.5d | 2006-05-11 | 2006-05-11 | 35 | 10.5d |  |  | Project Manager; Component Architect | 8h |
| 37 | 1.6.5 | Component Specifications | milestone | 7d | 2006-05-17 | 2006-05-26 | 34 | 0d |  | finish no earlier than 2005-02-11 | Component Architect | 56h |
| 38 | 1.7.7 | Application Design Specification |  | 5d | 2006-05-17 | 2006-05-24 | 34 | 2d |  |  | Component Architect | 40h |
| 39 | 1.8 | **Component Production** |  | 26d | 2006-05-26 | 2006-07-03 |  | 0d |  |  |  | 208h |
| 40 | 1.8.1 | Design Posting |  | 6d | 2006-05-26 | 2006-06-05 | 27 | 0d |  | start no earlier than 2005-03-09 | Member | 48h |
| 41 | 1.8.2 | Design Review |  | 4d | 2006-06-05 | 2006-06-09 | 40 | 0d |  | finish no earlier than 2005-03-21 | Member | 32h |
| 42 | 1.8.3 | Design Final Fixes |  | 2d | 2006-06-09 | 2006-06-13 | 41 | 0d |  |  | Member | 16h |
| 43 | 1.8.4 | Creation of Dev Distro |  | 1d | 2006-06-13 | 2006-06-14 | 42 | 0d |  |  | Component Manager | 8h |
| 44 | 1.8.5 | Development Posting |  | 6d | 2006-06-14 | 2006-06-22 | 43 | 0d |  | start no earlier than 2005-03-30 | Member | 48h |
| 45 | 1.8.6 | Development Review |  | 4d | 2006-06-22 | 2006-06-28 | 44 | 0d |  |  | Member | 32h |
| 46 | 1.8.7 | Development Final Fixes | milestone | 2d | 2006-06-28 | 2006-06-30 | 45 | 0d |  | finish no earlier than 2005-04-06 | Member | 16h |
| 47 | 1.8.8 | Post to Catalog |  | 1d | 2006-06-30 | 2006-07-03 | 46 | 0d |  |  | Component Manager | 8h |
| 48 | 1.9 | **Assembly Competitions** |  | 34d | 2006-06-12 | 2006-07-28 |  | 0d |  |  |  | 352h |
| 49 | 1.9.1 | **Setup** |  | 16d | 2006-06-12 | 2006-07-04 |  | 10d |  |  |  |  |
| 50 | 1.9.1.1 | Divide Use Cases for Competitions |  | 1d | 2006-06-12 | 2006-06-13 | 39FS-15d | 33d |  | start no earlier than 2006-03-29 |  |  |
| 51 | 1.9.1.2 | TopCoder Website Informaiton Posted |  | 1d | 2006-06-19 | 2006-06-20 | 39FS-10d | 5d | 0d | start no earlier than 2006-05-17 |  |  |
| 52 | 1.9.1.3 | Package Components |  | 1d | 2006-07-03 | 2006-07-04 | 47 | 0d |  |  |  |  |

| ID | WBS | Task | Duration | Start | Finish | Predecessors | Total slack | Free slack | Constraint | Resources | Work | Text1 |
| --- | --- | --- | --- | --- | --- | --- | --- | --- | --- | --- | --- | --- |
| 53 | 1.9.2 | **Test Case Development** | 5d | 2006-06-20 | 2006-06-27 |  | 5d |  |  |  | 32h |  |
| 54 | 1.9.2.1 | Submit tests | 4d | 2006-06-20 | 2006-06-26 | 51 | 5d | 0d | start no earlier than 2006-03-22 | test case participants | 32h |  |
| 55 | 1.9.2.2 | Screen test cases | 1d | 2006-06-26 | 2006-06-27 | 54 | 5d |  |  |  |  |  |
| 56 | 1.9.3 | Team Formation | 10d | 2006-06-20 | 2006-07-04 | 51 | 18d |  |  |  |  |  |
| 57 | 1.9.4 | **Development** | 18d | 2006-07-04 | 2006-07-28 |  | 0d |  |  |  | 320h |  |
| 58 | 1.9.4.1 | **Opening Round** | 18d | 2006-07-04 | 2006-07-28 |  | 0d |  |  |  | 160h |  |
| 59 | 1.9.4.1.1 | **Team Development** | 6d | 2006-07-04 | 2006-07-12 |  | 0d |  |  |  | 48h |  |
| 60 | 1.9.4.1.1.1 | **Development of Use Cases** | 6d | 2006-07-04 | 2006-07-12 |  | 0d |  |  | All Teams | 48h | prototype conversion, sequence diagram implementation |
| 61 | 1.9.4.1.1.1.1 | Create Unit Tests | 3d | 2006-07-04 | 2006-07-07 | 52, 53, 47 | 0d |  | start no earlier than 2006-03-28 |  |  |  |
| 62 | 1.9.4.1.1.1.2 | Convert Prototype | 3d | 2006-07-04 | 2006-07-07 | 52, 53 | 0d |  | start no earlier than 2006-03-29 |  |  |  |
| 63 | 1.9.4.1.1.1.3 | Configure components | 3d | 2006-07-04 | 2006-07-07 | 52, 53 | 0d |  | start no earlier than 2006-03-29 |  |  |  |
| 64 | 1.9.4.1.1.1.4 | Test | 3d | 2006-07-07 | 2006-07-12 | 61, 62, 63 | 0d |  |  |  |  |  |
| 65 | 1.9.4.1.2 | **Test case challenge** | 2d | 2006-07-12 | 2006-07-14 | 64 | 0d |  |  | All Captains | 56h |  |
| 66 | 1.9.4.1.2.1 | Submit Challenges | 1d | 2006-07-12 | 2006-07-13 |  | 0d |  |  |  |  |  |
| 67 | 1.9.4.1.2.2 | Appeals response | 1d | 2006-07-13 | 2006-07-14 | 66 | 0d |  |  | Reviewer3; Reviewer2; Reviewer1; Assembly Manager; Architect | 40h |  |
| 68 | 1.9.4.1.3 | **Review** | 10d | 2006-07-14 | 2006-07-28 |  | 0d |  |  |  | 56h |  |
| 69 | 1.9.4.1.3.1 | Score Testcases | 1d | 2006-07-14 | 2006-07-17 | 65 | 1d |  |  | DE | 8h |  |
| 70 | 1.9.4.1.3.2 | Score Submissions | 2d | 2006-07-14 | 2006-07-18 | 65 | 0d |  |  | DE | 16h |  |
| 71 | 1.9.4.1.3.3 | Review Code | 2d | 2006-07-18 | 2006-07-20 | 69, 70 | 0d |  |  | Review Team | 16h |  |
| 72 | 1.9.4.1.3.4 | Appeals | 1d | 2006-07-20 | 2006-07-21 | 71 | 0d |  |  | Review Team | 8h |  |
| 73 | 1.9.4.1.3.5 | Appeals Response | 1d | 2006-07-21 | 2006-07-24 | 72 | 0d |  |  | Review Team | 8h |  |
| 74 | 1.9.4.1.3.6 | Final Fixes | 3d | 2006-07-24 | 2006-07-27 | 73 | 0d |  |  |  |  |  |
| 75 | 1.9.4.1.3.7 | Final Review/PM Certification | 1d | 2006-07-27 | 2006-07-28 | 74 | 0d |  |  |  |  |  |
| 76 | 1.9.4.2 | **Round Two** | 18d | 2006-07-04 | 2006-07-28 |  | 0d |  |  |  | 160h |  |
| 77 | 1.9.4.2.1 | **Team Development** | 6d | 2006-07-04 | 2006-07-12 |  | 0d |  |  |  | 48h |  |
| 78 | 1.9.4.2.1.1 | **Development of Use Cases** | 6d | 2006-07-04 | 2006-07-12 |  | 0d |  |  | All Teams | 48h | prototype conversion, sequence diagram implementation |
| 79 | 1.9.4.2.1.1.1 | Create Unit Tests | 3d | 2006-07-04 | 2006-07-07 | 52, 53 | 0d |  | start no earlier than 2006-03-29 |  |  |  |
| 80 | 1.9.4.2.1.1.2 | Convert Prototype | 3d | 2006-07-04 | 2006-07-07 | 52, 53 | 0d |  | start no earlier than 2006-03-29 |  |  |  |
| 81 | 1.9.4.2.1.1.3 | Configure components | 3d | 2006-07-04 | 2006-07-07 | 52, 53 | 0d |  | start no earlier than 2006-03-28 |  |  |  |
| 82 | 1.9.4.2.1.1.4 | Test | 3d | 2006-07-07 | 2006-07-12 | 79, 80, 81 | 0d |  |  |  |  |  |

| ID | WBS | Task | Type | Duration | Start | Finish | Predecessors | Total slack | Free slack | Constraint | Resources | Work |
| --- | --- | --- | --- | --- | --- | --- | --- | --- | --- | --- | --- | --- |
| 83 | 1.9.4.2.2 | **Test case challenge** |  | 2d | 2006-07-12 | 2006-07-14 | 82 | 0d |  |  | All Captains | 56h |
| 84 | 1.9.4.2.2.1 | Submit Challenges |  | 1d | 2006-07-12 | 2006-07-13 |  | 0d |  |  |  |  |
| 85 | 1.9.4.2.2.2 | Appeals response |  | 1d | 2006-07-13 | 2006-07-14 | 84 | 0d |  |  | Reviewer3; Reviewer2; Reviewer1; Assembly Manager; Architect | 40h |
| 86 | 1.9.4.2.3 | **Review** |  | 10d | 2006-07-14 | 2006-07-28 |  | 0d |  |  |  | 56h |
| 87 | 1.9.4.2.3.1 | Score Testcases |  | 1d | 2006-07-14 | 2006-07-17 | 83 | 1d |  |  | DE | 8h |
| 88 | 1.9.4.2.3.2 | Score Submissions |  | 2d | 2006-07-14 | 2006-07-18 | 83 | 0d |  |  | DE | 16h |
| 89 | 1.9.4.2.3.3 | Review Code |  | 2d | 2006-07-18 | 2006-07-20 | 87, 88 | 0d |  |  | Review Team | 16h |
| 90 | 1.9.4.2.3.4 | Appeals |  | 1d | 2006-07-20 | 2006-07-21 | 89 | 0d |  |  | Review Team | 8h |
| 91 | 1.9.4.2.3.5 | Appeals Response |  | 1d | 2006-07-21 | 2006-07-24 | 90 | 0d |  |  | Review Team | 8h |
| 92 | 1.9.4.2.3.6 | Final Fixes |  | 3d | 2006-07-24 | 2006-07-27 | 91 | 0d |  |  |  |  |
| 93 | 1.9.4.2.3.7 | Final Review/ PM Certification |  | 1d | 2006-07-27 | 2006-07-28 | 92 | 0d |  |  |  |  |
| 94 | 1.10 | **Deployment** |  | 8d | 2006-07-28 | 2006-08-09 |  | 2d |  |  |  | 128h |
| 95 | 1.10.1 | Deployment to Customer QA |  | 8d | 2006-07-28 | 2006-08-09 | 48 | 2d | 0d | finish no earlier than 2005-05-27 | Project Manager; Application Assembler 1 | 128h |
| 96 | 1.11 | **Testing Iteration** |  | 20d | 2006-08-09 | 2006-09-06 |  | 2d |  |  |  | 240h |
| 97 | 1.11.1 | Test Plan Execution |  | 10d | 2006-08-09 | 2006-08-23 | 95 | 2d | 0d | finish no earlier than 2005-06-03 | Project Manager; Application Assembler 1 | 160h |
| 98 | 1.11.2 | User Acceptance Testing | milestone | 10d | 2006-08-23 | 2006-09-06 | 97 | 2d |  | finish no earlier than 2005-06-03 | Customer | 80h |
| 99 | 1.12 | **Support** |  | 30d | 2006-07-28 | 2006-09-08 |  | 0d |  |  |  | 240h |
| 100 | 1.12.1 | Capture DRs |  | 15d | 2006-07-28 | 2006-08-18 | 48 | 0d |  |  | Project Manager | 120h |
| 101 | 1.12.2 | Release Fix |  | 15d | 2006-08-18 | 2006-09-08 | 100 | 0d |  |  | Project Manager | 120h |
